# Project - Building a Website

Schedule from MS Project, 2018-03-29 to 2018-07-13.
Microsoft

## Calendars

- Standard: Mon-Fri 08:00-12:00, 13:00-17:00; Sat-Sun off.

## Resources

| Resource | Group |
| --- | --- |
| Ryan Gosling | PMO |
| Jake Ballard | PMO |
| Fitz Grant | Design Team |
| Liv Pope | Design Team |
| Cyrus Beane | Design Team |
| Mellie Perkins | Design Team |
| Abigael Wheelan | PMO |
| Sam Rogers | QA |
| Huck Gerald | QA |
| Rease Smith | QA |
| Liz North | QA |
| David Rosen | QA |
| Gina Thomas | Content |
| Susan McKinsey |  |
| Lindsay Sanders | Content |
| Abby Thomas | Dev |
| Liam Turner | Dev |
| Nabby Sergo | Dev |
| Alex Grand | Dev |
| Trinket Bullard | Dev |
| Ashley Miller | Intern |
| Noah Hodges | Intern |
| Hugh Jackman | Intern |
| Chris Evans | Content |
| Tracey Jordan | Support |
| Alan James | Support |
| Ellen Gunter | Support |
| Sonny Lee | StakeHolder |

## Schedule

| ID | WBS | Task | Type | Duration | Start | Finish | Predecessors | Total slack | Free slack | Resources | Work |
| --- | --- | --- | --- | --- | --- | --- | --- | --- | --- | --- | --- |
| 1 | 1 | **Building a Website** |  | 77d | 2018-03-29 | 2018-07-13 |  | 0d |  |  | 1592h |
| 2 | 1.1 | **Planning** |  | 10d | 2018-03-29 | 2018-04-11 |  | 0d |  |  | 80h |
| 3 | 1.1.1 | Research |  | 2d | 2018-03-29 | 2018-03-30 |  | 0d |  | Jake Ballard | 16h |
| 4 | 1.1.2 | Requirement |  | 2d | 2018-04-02 | 2018-04-03 | 3 | 0d |  | Ashley Miller | 16h |
| 5 | 1.1.3 | Report Analysis |  | 1d | 2018-04-04 | 2018-04-04 | 4 | 0d |  | Noah Hodges | 8h |
| 6 | 1.1.4 | Architecture Analysis |  | 1d | 2018-04-05 | 2018-04-05 | 5 | 0d |  | Hugh Jackman | 8h |
| 7 | 1.1.5 | Site Map |  | 2d | 2018-04-06 | 2018-04-09 | 6 | 0d |  | Susan McKinsey | 16h |
| 8 | 1.1.6 | Wireframe |  | 2d | 2018-04-10 | 2018-04-11 | 7 | 0d |  | Susan McKinsey | 16h |
| 9 | 1.1.7 | Planning Complete | milestone | 0d | 2018-04-11 | 2018-04-11 | 8 | 0d |  |  |  |
| 10 | 1.2 | **Design** |  | 24d | 2018-04-12 | 2018-05-15 |  | 0d |  |  | 192h |
| 11 | 1.2.1 | Logo Design |  | 3d | 2018-04-12 | 2018-04-16 | 9 | 0d |  | Liv Pope | 24h |
| 12 | 1.2.2 | Homepage & Internal Pages Design |  | 12d | 2018-04-17 | 2018-05-02 | 11 | 0d |  | Cyrus Beane | 96h |
| 13 | 1.2.3 | Themes & Styling |  | 7d | 2018-05-03 | 2018-05-11 | 12 | 0d |  | Mellie Perkins | 56h |
| 14 | 1.2.4 | Mock Design |  | 1d | 2018-05-14 | 2018-05-14 | 13 | 0d |  | Fitz Grant | 8h |
| 15 | 1.2.5 | Client Approval |  | 1d | 2018-05-15 | 2018-05-15 | 14 | 0d |  | Sonny Lee | 8h |
| 16 | 1.2.6 | High Level Design Complete | milestone | 0d | 2018-05-15 | 2018-05-15 | 15 | 0d |  |  |  |
| 17 | 1.3 | **Content Creation & SEO** |  | 20d | 2018-05-16 | 2018-06-12 |  | 8d |  |  | 160h |
| 18 | 1.3.1 | Content Development |  | 7d | 2018-05-16 | 2018-05-24 | 16 | 8d | 0d | Gina Thomas | 56h |
| 19 | 1.3.2 | Content Layout |  | 3d | 2018-05-25 | 2018-05-29 | 18 | 8d | 0d | Gina Thomas | 24h |
| 20 | 1.3.3 | Content Approval |  | 1d | 2018-05-30 | 2018-05-30 | 19 | 8d | 0d | Jake Ballard | 8h |
| 21 | 1.3.4 | SEO-Keywords & Titling |  | 5d | 2018-05-31 | 2018-06-06 | 20 | 8d | 0d | Lindsay Sanders | 40h |
| 22 | 1.3.5 | SEO-Images/Tags/ Connecting |  | 4d | 2018-06-07 | 2018-06-12 | 21 | 8d | 0d | Chris Evans | 32h |
| 23 | 1.3.6 | Content Creation &SEO Complete | milestone | 0d | 2018-06-12 | 2018-06-12 | 22 | 8d |  |  |  |
| 24 | 1.4 | **Development** |  | 52d | 2018-04-12 | 2018-06-22 |  | 0d |  |  | 640h |
| 25 | 1.4.1 | Platform &tool specification |  | 2d | 2018-04-12 | 2018-04-13 | 9 | 22d |  | Liam Turner | 16h |
| 26 | 1.4.2 | Low Level Design |  | 1d | 2018-05-16 | 2018-05-16 | 25, 16 | 0d |  | Abby Thomas | 8h |
| 27 | 1.4.3 | Coding |  | 25d | 2018-05-17 | 2018-06-20 | 26 | 0d |  | Nabby Sergo; Trinket Bullard; Alex Grand | 600h |
| 28 | 1.4.4 | Review Meeting |  | 2d | 2018-06-21 | 2018-06-22 | 27 | 0d |  | Liam Turner | 16h |
| 29 | 1.4.5 | Coding Complete | milestone | 0d | 2018-06-22 | 2018-06-22 | 28 | 0d |  |  |  |

| ID | WBS | Task | Type | Duration | Start | Finish | Predecessors | Total slack | Free slack | Constraint | Resources | Work |
| --- | --- | --- | --- | --- | --- | --- | --- | --- | --- | --- | --- | --- |
| 30 | 1.5 | **Testing** |  | 15d | 2018-06-25 | 2018-07-13 |  | 0d |  |  |  | 424h |
| 31 | 1.5.1 | Functional Testing |  | 15d | 2018-06-25 | 2018-07-13 | 23, 29 | 0d |  |  | Rease Smith; Liz North; David Rosen | 360h |
| 32 | 1.5.2 | Performance Testing |  | 7d | 2018-06-25 | 2018-07-03 | 29 | 3d | 0d |  | Sam Rogers | 56h |
| 33 | 1.5.3 | Review& Feedback Meeting |  | 1d | 2018-07-04 | 2018-07-04 | 32 | 3d | 0d |  | Huck Gerald | 8h |
| 34 | 1.5.4 | Testing Complete | milestone | 0d | 2018-07-04 | 2018-07-04 | 33 | 3d | 0d |  |  |  |
| 35 | 1.6 | **Launch** |  | 4d | 2018-07-05 | 2018-07-10 |  | 3d |  |  |  | 32h |
| 36 | 1.6.1 | Site Launching |  | 1d | 2018-07-05 | 2018-07-05 | 33, 34 | 3d | 0d |  | Abigael Wheelan | 8h |
| 37 | 1.6.2 | Customer/Client Feedback |  | 2d | 2018-07-06 | 2018-07-09 | 36 | 3d | 0d |  | Sonny Lee | 16h |
| 38 | 1.6.3 | Status Meeting |  | 1d | 2018-07-10 | 2018-07-10 | 37 | 3d | 0d |  | Sonny Lee | 8h |
| 39 | 1.6.4 | Launch Complete | milestone | 0d | 2018-07-10 | 2018-07-10 | 38 | 3d |  | finish no earlier than 2018-07-10 |  |  |
| 40 | 1.7 | **Improvements** |  | 3d | 2018-03-29 | 2018-04-02 |  | 74d |  |  |  | 64h |
| 41 | 1.7.1 | Documentation |  | 1d | 2018-03-29 | 2018-03-29 |  | 74d | 0d |  | Tracey Jordan; Alan James | 16h |
| 42 | 1.7.2 | Status Meeting |  | 1d | 2018-03-30 | 2018-03-30 | 41 | 74d | 0d |  | Sonny Lee; Abigael Wheelan; Ryan Gosling; Huck Gerald | 32h |
| 43 | 1.7.3 | Hand over to Maintenance Team |  | 1d | 2018-04-02 | 2018-04-02 | 42 | 74d | 0d |  | Liam Turner; Ellen Gunter | 16h |
| 44 | 1.7.4 | Maintanenece Beginning | milestone | 0d | 2018-04-02 | 2018-04-02 | 43 | 74d |  |  |  |  |
